# AmunaM_WileyAndSons- MS Project File

Schedule from MS Project, 2024-09-16 to 2025-12-03.
The objective of this project is to develop and deliver a mobile application for Wiley and Sons, to enhance user experience and engagement on both iOS and Android platforms on all devices. The project is scheduled to complete within 9 months, starting on June 2, 2024, and aims to release a minimum viable product (MVP) by month 6. Key milestones include completing user research by month 2, finalizing the app design and prototype by month 4, and conducting user acceptance testing by month 8. The project will adhere to quality standards and stay within the defined budget and timeline.

## Calendars

- Standard: Mon-Fri 08:00-12:00, 13:00-17:00; Sat-Sun off.

## Schedule

| ID | WBS | Task | Type | Duration | Start | Finish | Predecessors | Total slack |
| --- | --- | --- | --- | --- | --- | --- | --- | --- |
| 1 | 1 | **Wiley & Sons** |  | 318d | 2024-09-16 | 2025-12-03 |  | 0d |
| 2 | 1.1 | **Project Plan** |  | 8d | 2024-09-16 | 2024-09-25 |  | 0d |
| 3 | 1.1.1 | Create project timeline |  | 3d | 2024-09-16 | 2024-09-18 |  | 0d |
| 4 | 1.1.2 | Define budget and resources |  | 2d | 2024-09-19 | 2024-09-20 | 3 | 0d |
| 5 | 1.1.3 | Identify project risks |  | 3d | 2024-09-23 | 2024-09-25 | 4 | 0d |
| 6 | 1.2 | **Requirements Gathering** |  | 26d | 2024-09-26 | 2024-10-31 |  | 0d |
| 7 | 1.2.1 | **User Research** |  | 11d | 2024-09-26 | 2024-10-10 |  | 0d |
| 8 | 1.2.1.1 | Conduct stakeholder interviews |  | 3d | 2024-09-26 | 2024-09-30 | 5 | 0d |
| 9 | 1.2.1.2 | Develop user personas |  | 4d | 2024-09-27 | 2024-10-02 | 8FS-2d | 0d |
| 10 | 1.2.1.3 | Analyze user feedback |  | 6d | 2024-10-03 | 2024-10-10 | 9 | 0d |
| 11 | 1.2.1.4 | Requirement gathering phase complete | milestone | 0d | 2024-10-10 | 2024-10-10 | 10 | 0d |
| 12 | 1.2.2 | **Requirements Specification** |  | 15d | 2024-10-11 | 2024-10-31 |  | 0d |
| 13 | 1.2.2.1 | Document functional requirements |  | 5d | 2024-10-11 | 2024-10-17 | 11 | 0d |
| 14 | 1.2.2.2 | Document non-functional requirements |  | 4d | 2024-10-18 | 2024-10-23 | 13 | 0d |
| 15 | 1.2.2.3 | Develop a requirements traceability matrix |  | 6d | 2024-10-24 | 2024-10-31 | 14 | 0d |
| 16 | 1.3 | **Design** |  | 23d | 2024-11-01 | 2024-12-03 |  | 0d |
| 17 | 1.3.1 | UI/UX Design |  | 5d | 2024-11-01 | 2024-11-07 | 15 | 0d |
| 18 | 1.3.2 | Create wireframes for app screens |  | 3d | 2024-11-01 | 2024-11-05 | 17SS | 0d |
| 19 | 1.3.3 | Develop user journey maps |  | 2d | 2024-11-04 | 2024-11-05 | 18SS+1d | 0d |
| 20 | 1.3.4 | Conduct usability testing |  | 20d | 2024-11-06 | 2024-12-03 | 19 | 0d |
| 21 | 1.4 | **System Architecture** |  | 20d | 2024-12-04 | 2024-12-31 |  | 0d |
| 22 | 1.4.1 | Define backend architecture |  | 7d | 2024-12-04 | 2024-12-12 | 20 | 0d |
| 23 | 1.4.2 | Develop database schema |  | 5d | 2024-12-13 | 2024-12-19 | 22 | 0d |
| 24 | 1.4.3 | Design API specifications |  | 8d | 2024-12-20 | 2024-12-31 | 23 | 0d |

Notes:
- 8: I applied expert judgment to estimate the duration for conducting stakeholder interviews. Given that this activity involves gathering specific insights and requirements directly from key stakeholders, leveraging expert insights from previous projects helped inform a realistic timeline. Experienced team members provided input on how much time each interview might require, factoring in possible scheduling challenges and the likelihood of follow-up meetings. This approach allowed for an accurate and adaptable estimate, accounting for the unique needs and expectations of each stakeholder group involved.
- 18: Wireframe creation and journey mapping should proceed in parallel since user journey insights can help refine wireframes, while wireframes provide a visual reference for mapping detailed user flows. Parallel progress on these tasks facilitates a holistic design approach, making adjustments smoother and ensuring design cohesiveness as both are iteratively developed.
- 19: Wireframe creation and journey mapping should proceed in parallel since user journey insights can help refine wireframes, while wireframes provide a visual reference for mapping detailed user flows. Parallel progress on these tasks facilitates a holistic design approach, making adjustments smoother and ensuring design cohesiveness as both are iteratively developed.

| ID | WBS | Task | Type | Duration | Start | Finish | Predecessors | Total slack |
| --- | --- | --- | --- | --- | --- | --- | --- | --- |
| 25 | 1.5 | **Development** |  | 80d | 2025-01-01 | 2025-04-22 |  | 0d |
| 26 | 1.5.1 | **Frontend Development** |  | 20d | 2025-01-01 | 2025-01-28 |  | 0d |
| 27 | 1.5.1.1 | Develop iOS interface |  | 5d | 2025-01-01 | 2025-01-07 | 24 | 0d |
| 28 | 1.5.1.2 | Develop Android interface |  | 5d | 2025-01-08 | 2025-01-14 | 27 | 0d |
| 29 | 1.5.1.3 | Implement basic navigation |  | 10d | 2025-01-15 | 2025-01-28 | 28 | 0d |
| 30 | 1.5.1.4 | Development phase complete | milestone | 0d | 2025-01-28 | 2025-01-28 | 29 | 0d |
| 31 | 1.5.2 | **Backend Development** |  | 30d | 2025-01-29 | 2025-03-11 | 30 | 0d |
| 32 | 1.5.2.1 | Implement user authentication |  | 10d | 2025-01-29 | 2025-02-11 | 30 | 0d |
| 33 | 1.5.2.2 | Develop database integration |  | 10d | 2025-02-12 | 2025-02-25 | 32 | 0d |
| 34 | 1.5.2.3 | Set up cloud storage |  | 10d | 2025-02-26 | 2025-03-11 | 33 | 0d |
| 35 | 1.5.3 | **API Development** |  | 30d | 2025-03-12 | 2025-04-22 | 34 | 0d |
| 36 | 1.5.3.1 | Develop API endpoints |  | 10d | 2025-03-12 | 2025-03-25 | 34 | 0d |
| 37 | 1.5.3.2 | Test API functionality |  | 10d | 2025-03-26 | 2025-04-08 | 36 | 0d |
| 38 | 1.5.3.3 | Document API usage |  | 10d | 2025-04-09 | 2025-04-22 | 37 | 0d |
| 39 | 1.6 | **Testing** |  | 5d | 2025-04-23 | 2025-04-29 |  | 0d |
| 40 | 1.6.1 | **Quality Assurance** |  | 5d | 2025-04-23 | 2025-04-29 |  | 0d |
| 41 | 1.6.1.1 | Conduct unit testing |  | 5d | 2025-04-23 | 2025-04-29 | 38 | 0d |
| 42 | 1.6.1.2 | Perform integration testing |  | 3d | 2025-04-25 | 2025-04-29 | 41FF | 0d |
| 43 | 1.6.1.3 | Resolve identified defects |  | 5d | 2025-04-23 | 2025-04-29 | 42FF | 0d |
| 44 | 1.7 | **User Acceptance Testing (UAT)** |  | 10d | 2025-04-30 | 2025-05-13 |  | 0d |
| 45 | 1.7.1 | **Coordinate UAT with stakeholders** |  | 10d | 2025-04-30 | 2025-05-13 |  | 0d |
| 46 | 1.7.1.1 | Gather UAT feedback |  | 5d | 2025-04-30 | 2025-05-06 | 43 | 0d |
| 47 | 1.7.1.2 | Make necessary adjustments |  | 5d | 2025-05-07 | 2025-05-13 | 46 | 0d |
| 48 | 1.8 | **Deployment and Launch** |  | 27d | 2025-05-14 | 2025-06-19 |  | 0d |
| 49 | 1.8.1 | **Pre-Launch Checklist** |  | 10d | 2025-05-14 | 2025-05-27 |  | 0d |
| 50 | 1.8.1.1 | Prepare app store listings |  | 3d | 2025-05-14 | 2025-05-16 | 47 | 0d |
| 51 | 1.8.1.2 | Complete security checks |  | 3d | 2025-05-19 | 2025-05-21 | 50 | 0d |
| 52 | 1.8.1.3 | Create backup and rollback plan |  | 4d | 2025-05-22 | 2025-05-27 | 51 | 0d |
| 53 | 1.8.1.4 | App Launch | milestone | 0d | 2025-05-27 | 2025-05-27 | 52 | 0d |

Notes:
- 42: These tasks are planned with an FF relationship because resolving defects depends on the completion of integration testing, and any final defect resolution should be completed as integration testing concludes. This alignment helps to ensure all identified issues are addressed just as testing wraps up, allowing for a smoother transition into User Acceptance Testing.
- 43: These tasks are planned with an FF relationship because resolving defects depends on the completion of integration testing, and any final defect resolution should be completed as integration testing concludes. This alignment helps to ensure all identified issues are addressed just as testing wraps up, allowing for a smoother transition into User Acceptance Testing.

| ID | WBS | Task | Duration | Start | Finish | Predecessors | Total slack | Constraint | Deadline |
| --- | --- | --- | --- | --- | --- | --- | --- | --- | --- |
| 54 | 1.8.2 | **Launch App** | 10d | 2025-05-28 | 2025-06-10 | 53 | 0d | finish no later than 2025-06-12 |  |
| 55 | 1.8.2.1 | Deploy on Ios App Store | 4d | 2025-05-28 | 2025-06-02 | 53 | 0d |  | 2025-06-05 |
| 56 | 1.8.2.2 | Deploy on Google Play Store | 4d | 2025-06-03 | 2025-06-06 | 55 | 0d |  |  |
| 57 | 1.8.2.3 | Monitor for post-launch issues | 2d | 2025-06-09 | 2025-06-10 | 56 | 0d |  |  |
| 58 | 1.8.3 | **Post-Launch Support** | 7d | 2025-06-11 | 2025-06-19 |  | 0d |  |  |
| 59 | 1.8.3.1 | **Technical Support Setup** | 7d | 2025-06-11 | 2025-06-19 |  | 0d |  |  |
| 60 | 1.8.3.1.1 | Set up support team | 2d | 2025-06-11 | 2025-06-12 | 57 | 0d |  |  |
| 61 | 1.8.3.1.2 | Provide training on app support | 1d | 2025-06-13 | 2025-06-13 | 60 | 0d |  |  |
| 62 | 1.8.3.1.3 | Develop a user support FAQ | 4d | 2025-06-16 | 2025-06-19 | 61 | 0d |  |  |
| 63 | 1.9 | **Performance Monitoring** | 10d | 2025-06-20 | 2025-07-03 |  | 0d |  |  |
| 64 | 1.9.1 | Implement analytics tracking | 3d | 2025-06-20 | 2025-06-24 | 62 | 0d |  |  |
| 65 | 1.9.2 | Set up error logging | 3d | 2025-06-25 | 2025-06-27 | 64 | 0d |  |  |
| 66 | 1.9.3 | Monitor app performance | 4d | 2025-06-30 | 2025-07-03 | 65 | 0d |  |  |
| 67 | 1.10 | **Project Management Deliverables** | 10d | 2025-07-04 | 2025-07-17 | 66 | 0d |  |  |
| 68 | 1.10.1 | Project Status Reports | 3d | 2025-07-04 | 2025-07-08 | 66 | 0d |  |  |
| 69 | 1.10.2 | Weekly project updates | 3d | 2025-07-09 | 2025-07-11 | 68 | 0d |  |  |
| 70 | 1.10.3 | Monthly performance reviews | 4d | 2025-07-14 | 2025-07-17 | 69 | 0d |  |  |
| 71 | 1.11 | **Stakeholder Communication** | 45d | 2025-07-18 | 2025-09-18 | 70 | 0d |  |  |
| 72 | 1.11.1 | Schedule bi-weekly meetings | 30d | 2025-07-18 | 2025-08-28 | 70 | 0d |  |  |
| 73 | 1.11.2 | Provide project documentation updates | 15d | 2025-08-29 | 2025-09-18 | 72 | 0d |  |  |
| 74 | 1.12 | **Risk Management** | 20d | 2025-09-19 | 2025-10-16 | 73 | 0d |  |  |
| 75 | 1.12.1 | Update risk register | 10d | 2025-09-19 | 2025-10-02 | 73 | 0d |  |  |
| 76 | 1.12.2 | Perform risk assessments | 10d | 2025-10-03 | 2025-10-16 | 75 | 0d |  |  |
| 77 | 1.13 | **Budget Tracking** | 16d | 2025-10-17 | 2025-11-07 | 76 | 0d |  |  |
| 78 | 1.13.1 | Monitor project expenses | 8d | 2025-10-17 | 2025-10-28 | 76 | 0d |  |  |
| 79 | 1.13.2 | Update budget forecast | 8d | 2025-10-29 | 2025-11-07 | 78 | 0d |  |  |

Notes:
- 54: The Launch App task is constrained to this specific date to ensure alignment with a planned marketing campaign and product launch event. This constraint is necessary to meet the scheduled release across app stores and coordinate with stakeholders for a synchronized product launch.
- 55: Deadline reminder set to ensure Deploy on iOS App Store is completed in advance of the final launch date. This deadline helps coordinate marketing efforts and gives time to address any last-minute app store requirements or compliance checks before full deployment.

| ID | WBS | Task | Duration | Start | Finish | Predecessors | Total slack |
| --- | --- | --- | --- | --- | --- | --- | --- |
| 80 | 1.14 | **Final Project Report** | 18d | 2025-11-10 | 2025-12-03 | 79 | 0d |
| 81 | 1.14.1 | Compile project findings | 5d | 2025-11-10 | 2025-11-14 | 79 | 0d |
| 82 | 1.14.2 | Document lessons learned | 5d | 2025-11-17 | 2025-11-21 | 81 | 0d |
| 83 | 1.14.3 | **Ongoing Maintenance and Improvement** | 8d | 2025-11-24 | 2025-12-03 | 82 | 0d |
| 84 | 1.14.3.1 | Develop user manuals | 3d | 2025-11-24 | 2025-11-26 | 82 | 0d |
| 85 | 1.14.3.2 | Conduct training sessions for end users | 3d | 2025-11-27 | 2025-12-01 | 84 | 0d |
| 86 | 1.14.3.3 | Create internal documentation for support staff | 2d | 2025-12-02 | 2025-12-03 | 85 | 0d |

Notes:
- 85: I utilised a combination of historical data and the learning curve effect to estimate the time needed for conducting end-user training sessions. Reviewing past projects with similar training requirements provided a baseline for the duration of each session and helped forecast potential challenges, such as varying familiarity with the system. Additionally, I accounted for the learning curve, anticipating that as trainers progressed through sessions, they would likely increase efficiency and reduce the time required per group. This approach allowed for a balanced estimate that anticipated both initial challenges and potential gains in training speed over time.
